# IT_Currency_MSTR_To_PULSE_v4.xml

Schedule from MS Project XML, 2017-08-22 to 2019-10-23, A marks actual dates.
Bell Canada

## Calendars

- Standard: Mon-Fri 08:00-12:00, 13:00-17:00; Sat-Sun off. Exceptions (off unless hours are given): 2017-10-28 08:00-12:00, 13:00-17:00.

## Resources

| Resource |
| --- |
| Tylor H |
| MAS |
| Jerry |
| BPASS |
| BI Dev |
| Ryan L |
| MAria M |
| MAaria M |
| MSTR |
| 9 |
| Gino |
| Corp Sec |
| Jerry M |
| Gino F |
| Iouri P |
| Len |
| Rob |
| Rob P |
| Shawn A. |
| CGI |
| Maria Ma |

## Schedule

| ID | WBS | Task | Duration | Start | Finish | Predecessors | Complete | Remaining | Actual start | Total slack | Free slack | Constraint | Deadline | Resources | Work | Actual work |
| --- | --- | --- | --- | --- | --- | --- | --- | --- | --- | --- | --- | --- | --- | --- | --- | --- |
| 1 | 1 | **IT_Currency_MSTR_To_PULSE** | 568d? | 2017-08-22 A | 2019-10-23 |  | 8% | 523.24d? |  | 0d |  |  |  |  | 6136h | 1413.25h |
| 2 | 1.1 | **Internal ICN Servers** | 59d | 2018-12-10 | 2019-02-28 |  |  |  |  | 169d |  |  |  |  |  |  |
| 3 | 1.1.1 | Pre-Deployment | 56d | 2018-12-10 | 2019-02-25 |  |  |  |  | 169d | 0d | start no earlier than 2018-12-10 |  |  |  |  |
| 4 | 1.1.2 | Deployment | 3d | 2019-02-26 | 2019-02-28 | 3 |  |  |  | 169d |  | start no earlier than 2019-02-25 |  |  |  |  |
| 5 | 1.2 | Corp Sec Greenlight | 1d | 2019-03-01 A | 2019-03-01 A |  | 100% |  |  |  |  | finish no earlier than 2019-01-31 |  | Iouri P | 8h | 8h |
| 6 | 1.3 | IT Greenlight | 1d? | 2019-03-04 | 2019-03-04 | 5 |  |  |  | -351d | 0d |  |  | Gino F | 8h |  |
| 7 | 1.4 | **Pre-Implementation Assessment** | 517d? | 2017-08-22 A | 2019-08-13 |  | 23% | 398.34d? |  | 51d |  |  |  | MSTR | 6120h | 1405.25h |
| 8 | 1.4.1 | **Grouping BU teams** | 1d? | 2017-08-22 | 2017-08-22 |  |  |  |  | 567d |  |  |  |  | 32h |  |
| 9 | 1.4.1.1 | Grouping each BU projects based on their priority | 1d? | 2017-08-22 | 2017-08-22 |  |  |  |  | 567d |  |  |  | Rob P; Shawn A. | 16h |  |
| 10 | 1.4.1.2 | Resource Alignment | 1d? | 2017-08-22 | 2017-08-22 |  |  |  |  | 567d |  |  |  | Shawn A. | 8h |  |
| 11 | 1.4.1.3 | Licensing | 1d? | 2017-08-22 | 2017-08-22 |  |  |  |  | 567d |  |  |  | Rob P | 8h |  |
| 12 | 1.4.2 | **BI Currency** | 22d | 2018-12-10 | 2019-08-13 | 6 | 99% | 0d | 2017-09-29 |  |  |  |  | Ryan L | 1864h | 456h |
| 13 | 1.4.2.1 | Complete BI Project Implementation to Pulse 10.3 | 1d | 2017-09-29 A | 2017-09-29 A |  | 100% |  |  |  |  | start no earlier than 2017-10-13 |  | Tylor H; MAS | 16h | 16h |
| 14 | 1.4.2.2 | Complete MSTR User Implementation to Pulse 10.3 | 1d | 2017-09-29 A | 2017-09-29 A |  | 100% |  |  |  |  | start no earlier than 2017-09-29 |  | Tylor H; MAS | 16h | 16h |
| 15 | 1.4.2.3 | BI Dev Login table name update | 5d | 2017-10-02 A | 2017-10-06 A | 13, 14 | 100% |  |  |  |  | finish no earlier than 2017-10-06 |  | Tylor H; BI Dev | 80h | 80h |
| 16 | 1.4.2.4 | BPASS to BI360 interface | 21d? | 2017-10-02 A | 2017-10-28 A | 13, 14 | 100% |  |  |  |  | start no earlier than 2017-10-02 |  | Tylor H; BPASS | 336h | 336h |
| 17 | 1.4.3 | **Non-BI Currency from Legacy to Pulse** | 5d? | 2019-03-05 | 2019-03-11 |  |  |  |  | 18d |  |  |  | Shawn A. | 88h |  |
| 18 | 1.4.3.1 | **Information Gathering - Legacy** | 5d? | 2019-03-05 | 2019-03-11 |  |  |  |  | 18d |  |  | 2019-04-04 | Maria Ma | 48h |  |
| 19 | 1.4.3.1.1 | **PROD** | 5d? | 2019-03-05 | 2019-03-11 | 6 |  |  |  | 18d |  |  |  |  | 8h |  |
| 20 | 1.4.3.1.1.1 | Snapshot of current project configuration | 1d? | 2019-03-05 | 2019-03-05 |  |  |  |  | 22d |  |  |  | MAS | 8h |  |
| 21 | 1.4.3.1.1.2 | Identify active projects | 5d | 2019-03-05 | 2019-03-11 |  |  |  |  | 18d |  |  |  |  |  |  |
| 22 | 1.4.3.1.1.3 | Identify Users, Groups, and access levels | 5d | 2019-03-05 | 2019-03-11 |  |  |  |  | 18d | 0d |  |  |  |  |  |
| 23 | 1.4.3.1.1.4 | Guide/Build Book | 1d | 2019-03-05 | 2019-03-05 |  |  |  |  | 22d |  |  |  |  |  |  |
| 24 | 1.4.3.1.1.5 | ODBC Details | 1d | 2019-03-05 | 2019-03-05 |  |  |  |  | 22d |  |  |  |  |  |  |
| 25 | 1.4.3.1.1.6 | iServer Screenshots | 3d | 2019-03-05 | 2019-03-07 |  |  |  |  | 20d |  |  |  |  |  |  |
| 26 | 1.4.3.1.1.7 | WebServer Screenshots | 3d | 2019-03-05 | 2019-03-07 |  |  |  |  | 20d |  |  |  |  |  |  |
| 27 | 1.4.3.1.1.8 | Project Config | 3d | 2019-03-05 | 2019-03-07 |  |  |  |  | 20d |  |  |  |  |  |  |
| 28 | 1.4.3.1.1.9 | Customizations | 3d | 2019-03-05 | 2019-03-07 |  |  |  |  | 20d |  |  |  |  |  |  |
| 29 | 1.4.3.1.1.10 | List of Projects using Mobile | 3d | 2019-03-05 | 2019-03-07 |  |  |  |  | 20d |  |  |  |  |  |  |
| 30 | 1.4.3.1.1.11 | Mobile Server Configuration | 3d | 2019-03-05 | 2019-03-07 |  |  |  |  | 20d |  |  |  |  |  |  |
| 31 | 1.4.3.1.1.12 | MicroStrategy SDK customization and Plugin documentation | 3d | 2019-03-05 | 2019-03-07 |  |  |  |  | 20d |  |  |  |  |  |  |
| 32 | 1.4.3.1.1.13 | Server Utilization | 3d | 2019-03-05 | 2019-03-07 |  |  |  |  | 20d |  |  |  |  |  |  |
| 33 | 1.4.3.1.1.14 | Cube sizes | 3d | 2019-03-05 | 2019-03-07 |  |  |  |  | 20d |  |  |  |  |  |  |
| 34 | 1.4.3.1.1.15 | Triggers and Schedule documentation | 3d | 2019-03-05 | 2019-03-07 |  |  |  |  | 20d |  |  |  |  |  |  |
| 35 | 1.4.3.1.1.16 | Report Distribution (Email and History List) | 3d | 2019-03-05 | 2019-03-07 |  |  |  |  | 20d |  |  |  |  |  |  |

Notes:
- 15: delayed to 11/3
- 16: delayed to 11/3
- 18: Must have ALL the information from BUs.
- 22: Security filters might require ESM logging table change
- 28: Bell Media - project load scripts & j-query location

| ID | WBS | Task | Duration | Start | Finish | Predecessors | Total slack | Free slack |
| --- | --- | --- | --- | --- | --- | --- | --- | --- |
| 36 | 1.4.3.1.2 | **DEV** | 5d | 2019-03-05 | 2019-03-11 | 6 | 18d |  |
| 37 | 1.4.3.1.2.1 | Identify active projects | 5d | 2019-03-05 | 2019-03-11 |  | 18d |  |
| 38 | 1.4.3.1.2.2 | Identify Users, Groups, and access levels | 5d | 2019-03-05 | 2019-03-11 |  | 18d |  |
| 39 | 1.4.3.1.2.3 | Guide/Build Book | 1d | 2019-03-05 | 2019-03-05 |  | 22d |  |
| 40 | 1.4.3.1.2.4 | ODBC Details | 1d | 2019-03-05 | 2019-03-05 |  | 22d |  |
| 41 | 1.4.3.1.2.5 | iServer Screenshots | 3d | 2019-03-05 | 2019-03-07 |  | 20d |  |
| 42 | 1.4.3.1.2.6 | WebServer Screenshots | 3d | 2019-03-05 | 2019-03-07 |  | 20d |  |
| 43 | 1.4.3.1.2.7 | Project Config | 3d | 2019-03-05 | 2019-03-07 |  | 20d |  |
| 44 | 1.4.3.1.2.8 | Customizations | 3d | 2019-03-05 | 2019-03-07 |  | 20d |  |
| 45 | 1.4.3.1.2.9 | List of Projects using Mobile | 3d | 2019-03-05 | 2019-03-07 |  | 20d |  |
| 46 | 1.4.3.1.2.10 | Mobile Server Configuration | 3d | 2019-03-05 | 2019-03-07 |  | 20d |  |
| 47 | 1.4.3.1.2.11 | MicroStrategy SDK customization and Plugin documentation | 3d | 2019-03-05 | 2019-03-07 |  | 20d |  |
| 48 | 1.4.3.1.2.12 | Server Utilization | 3d | 2019-03-05 | 2019-03-07 |  | 20d |  |
| 49 | 1.4.3.1.2.13 | Cube sizes | 3d | 2019-03-05 | 2019-03-07 |  | 20d |  |
| 50 | 1.4.3.1.2.14 | Triggers and Schedule documentation | 3d | 2019-03-05 | 2019-03-07 |  | 20d |  |
| 51 | 1.4.3.1.2.15 | Report Distribution (Email and History List) | 3d | 2019-03-05 | 2019-03-07 |  | 20d |  |
| 52 | 1.5 | **Projects Implementation** | 568d? | 2017-08-22 | 2019-10-23 |  | 0d |  |
| 53 | 1.5.1 | **Fortify PROD** | 35d | 2017-08-22 | 2017-10-09 |  | 533d |  |
| 54 | 1.5.1.1 | Add new internal Web Servers servers to PROD | 30d | 2017-08-22 | 2017-10-02 |  | 533d | 0d |
| 55 | 1.5.1.2 | Connect new internal Web Servers to SiteMinder | 5d | 2017-10-03 | 2017-10-09 | 54 | 533d |  |
| 56 | 1.5.1.3 | Items to fortify from MSTR FMO recmendation | 30d | 2017-08-22 | 2017-10-02 |  | 538d |  |
| 57 | 1.5.2 | **Legacy DEV to Pulse DEV** | 17d | 2019-08-28 | 2019-09-19 |  | 24d |  |
| 58 | 1.5.2.1 | Engage CGI MAS | 3d | 2019-08-28 | 2019-08-30 | 70 | 24d | 0d |
| 59 | 1.5.2.2 | Obtain FID passwords from BUs | 3d | 2019-08-28 | 2019-08-30 | 70 | 24d | 0d |

Notes:
- 38: Security filters might require ESM logging table change
- 44: Bell Media - project load scripts & j-query location
- 52: Staggered by BUs

| ID | WBS | Task | Type | Duration | Start | Finish | Predecessors | Total slack | Free slack |
| --- | --- | --- | --- | --- | --- | --- | --- | --- | --- |
| 60 | 1.5.2.3 | **Legacy DEV to Pulse DEV** |  | 7d | 2019-09-02 | 2019-09-10 | 58, 59 | 24d | 0d |
| 61 | 1.5.2.3.1 | Projects |  | 7d | 2019-09-02 | 2019-09-10 |  | 24d | 0d |
| 62 | 1.5.2.3.2 | Cubes |  | 7d | 2019-09-02 | 2019-09-10 |  | 29d |  |
| 63 | 1.5.2.3.3 | Regenerate Cubes (if necessary) |  | 5d | 2019-09-02 | 2019-09-06 |  | 31d |  |
| 64 | 1.5.2.3.4 | Test Users |  | 7d | 2019-09-02 | 2019-09-10 |  | 29d |  |
| 65 | 1.5.2.4 | Integrity Manager Check against Legacy baseline |  | 2d | 2019-09-11 | 2019-09-12 | 60 | 29d |  |
| 66 | 1.5.2.5 | Validation |  | 7d | 2019-09-11 | 2019-09-19 | 61 | 24d |  |
| 67 | 1.5.3 | **Legacy PROD to Pulse Pre-Prod & Prod** |  | 28d? | 2019-08-14 | 2019-09-20 | 5, 6, 12 | 0d |  |
| 68 | 1.5.3.1 | Engage CGI MAS |  | 3d | 2019-08-14 | 2019-08-16 |  | 0d |  |
| 69 | 1.5.3.2 | Obtain FID passwords from BUs |  | 3d | 2019-08-14 | 2019-08-16 |  | 0d |  |
| 70 | 1.5.3.3 | **Legacy PROD to Pulse PRE-PROD** |  | 7d | 2019-08-19 | 2019-08-27 | 68, 69 | 0d |  |
| 71 | 1.5.3.3.1 | Projects |  | 7d | 2019-08-19 | 2019-08-27 |  | 0d |  |
| 72 | 1.5.3.3.2 | Cubes |  | 7d | 2019-08-19 | 2019-08-27 |  | 24d |  |
| 73 | 1.5.3.3.3 | Regenerate Cubes (if necessary) |  | 5d | 2019-08-19 | 2019-08-23 |  | 26d |  |
| 74 | 1.5.3.3.4 | Test Users |  | 7d | 2019-08-19 | 2019-08-27 |  | 24d |  |
| 75 | 1.5.3.4 | Integrity Manager Check against Legacy baseline |  | 5d | 2019-08-28 | 2019-09-03 | 70 | 36d |  |
| 76 | 1.5.3.5 | Validation |  | 5d | 2019-08-28 | 2019-09-03 | 71 | 0d |  |
| 77 | 1.5.3.6 | Promotion to Pulse PROD |  | 2d | 2019-09-04 | 2019-09-05 | 76 | 0d |  |
| 78 | 1.5.3.7 | Add cores to new servers |  | 10d | 2019-09-06 | 2019-09-19 | 77 | 0d |  |
| 79 | 1.5.3.8 | Sanity Check |  | 1d? | 2019-09-20 | 2019-09-20 | 78 | 0d |  |
| 80 | 1.5.4 | **Users Implementation** |  | 162d? | 2019-03-12 | 2019-10-23 |  | 0d |  |
| 81 | 1.5.4.1 | Review ESM for compatibility |  | 3d | 2019-03-12 | 2019-03-14 | 22 | 125d | 0d |
| 82 | 1.5.4.2 | ESM Changes, if necessary |  | 10d | 2019-03-15 | 2019-03-28 | 81 | 125d | 0d |
| 83 | 1.5.4.3 | Engage LDAP for bulk add to Login table |  | 1d? | 2019-03-15 | 2019-03-15 | 81 | 134d | 9d |
| 84 | 1.5.4.4 | User Access to Pulse PROD |  | 1d? | 2019-03-29 | 2019-03-29 | 82, 83 | 125d |  |
| 85 | 1.5.4.5 | PROD Validation |  | 1d? | 2019-09-23 | 2019-09-23 | 84, 79 | 0d |  |
| 86 | 1.5.4.6 | OTSS and IT Greenlight for Cut-over |  | 3d | 2019-09-24 | 2019-09-26 | 85 | 0d |  |
| 87 | 1.5.4.7 | Cut-Over to Bus end users (to access PULSE) |  | 1d? | 2019-09-27 | 2019-09-27 | 86 | 0d |  |
| 88 | 1.5.4.8 | Decommission non-BI Projects on Legacy 10.3 |  | 3d | 2019-10-21 | 2019-10-23 | 87FS+15d | 0d |  |
| 89 | 1.6 | Sign off | milestone | 1d? | 2017-08-22 | 2017-08-22 |  | 567d |  |

Notes:
- 60: Assumption: BUs staggered over 7 days
- 61: Incl. Customizations
- 62: RISK: Windows to Unix server move.
- 65: Run against Legacy and Pulse DEV
- 70: Assumption: BUs staggered over 7 days
- 71: Incl. Customizations
- 72: RISK: Windows to Unix server move.
- 75: Run against Legacy and Pulse PROD
- 78: RISK: Confirm with MSTR if Legacy Users still ok till Cutover
- 81: Security filters might require logging table change
- 84: Need details on process
- 89: All BUs
