# Haventree - Architecture Strategy and Roadmap

Schedule from MS Project XML, 2020-09-14 to 2020-11-04, A marks actual dates.

## Calendars

- SG Weekdays: Mon-Fri 08:00-12:00, 13:00-17:00; Sat-Sun off.

## Schedule

| ID | WBS | Task | Duration | Start | Finish | Predecessors | Constraint | Work |
| --- | --- | --- | --- | --- | --- | --- | --- | --- |
| 1 | 1 | **Project Initiation and Analysis** | 9d | 2020-09-14 08:00 A | 2020-09-24 17:00 |  |  | 72h |
| 2 | 1.1 | Kiock-off and Alignment | 1d | 2020-09-14 08:00 A | 2020-09-14 17:00 |  |  | 8h |
| 3 | 1.2 | Review Existing Artifacts | 0.5d | 2020-09-15 08:00 A | 2020-09-15 12:00 | 2 | must start on 2020-09-15 08:00 | 4h |
| 4 | 1.3 | Capture New Context - Strategy, Context, Work Done, Technology Roadmap | 2d | 2020-09-15 13:00 A | 2020-09-17 12:00 | 3 | must start on 2020-09-15 13:00 | 16h |
| 5 | 1.4 | Review and Refinement of Uses Cases and Initiatives - priority, cost, benefit, calue | 5d | 2020-09-17 13:00 A | 2020-09-24 12:00 | 4 | must start on 2020-09-17 13:00 | 40h |
| 6 | 1.5 | Final Draft Initiatives - context and details | 0.5d | 2020-09-24 13:00 A | 2020-09-24 17:00 | 5 | must start on 2020-09-24 13:00 | 4h |
| 7 | 2 | **IT Architecture Strategy and Technology** | 14.5d | 2020-09-17 13:00 A | 2020-10-07 17:00 |  |  | 116h |
| 8 | 2.1 | Technology Review and Technology alignment | 2d | 2020-09-17 13:00 A | 2020-09-21 12:00 | 4 | must start on 2020-09-17 13:00 | 16h |
| 9 | 2.2 | Finalize Platforms for Evaluation - 1.5 total (AWS, Salesforce) | 0.5d | 2020-09-21 13:00 A | 2020-09-21 17:00 | 8 | must start on 2020-09-21 13:00 | 4h |
| 10 | 2.3 | R&D, Technology Evaluation, Documentation - Pros/Cons | 10d | 2020-09-22 08:00 A | 2020-10-05 17:00 | 9 | must start on 2020-09-22 08:00 | 80h |
| 11 | 2.4 | Alignment on IT Architecture Strategy and Elements | 2d | 2020-10-06 08:00 A | 2020-10-07 17:00 | 10 | must start on 2020-10-06 08:00 | 16h |
| 12 | 3 | **Technology Roadmap** | 32d | 2020-09-25 08:00 A | 2020-11-02 17:00 |  |  | 256h |
| 13 | 3.1 | Swimlane Development | 5d | 2020-09-25 08:00 A | 2020-10-01 17:00 | 6 | must start on 2020-09-25 08:00 | 40h |
| 14 | 3.2 | Roadmap Alignment | 5d | 2020-10-02 08:00 A | 2020-10-08 17:00 | 13 | must start on 2020-10-02 08:00 | 40h |
| 15 | 3.3 | Benefit evaluation and alignment | 2d | 2020-10-09 08:00 A | 2020-10-12 17:00 | 14 | must start on 2020-10-09 08:00 | 16h |
| 16 | 3.4 | Data Lake/Hub - Plan | 10d | 2020-10-13 08:00 A | 2020-10-26 17:00 | 15 | must start on 2020-10-13 08:00 | 80h |
| 17 | 3.5 | **Migration plan** | 10d | 2020-10-27 08:00 A | 2020-11-02 17:00 |  |  | 80h |
| 18 | 3.5.1 | Datawarehouse Migration plan | 5d | 2020-10-27 08:00 A | 2020-11-02 17:00 | 16 | must start on 2020-10-27 08:00 | 40h |
| 19 | 3.5.2 | BI Migration plan | 5d | 2020-10-27 08:00 A | 2020-11-02 17:00 | 16 | must start on 2020-10-27 08:00 | 40h |
| 20 | 4 | **Reviews** | 1.75d | 2020-09-22 08:00 A | 2020-10-09 10:00 |  |  | 14h |
| 21 | 4.1 | Initiatives | 0.5d | 2020-09-24 13:00 A | 2020-09-24 17:00 | 5 | must start on 2020-09-24 13:00 | 4h |
| 22 | 4.2 | Architecture Strategy - 1 | 0.5d | 2020-09-22 08:00 A | 2020-09-22 12:00 | 9 | must start on 2020-09-22 08:00 | 4h |
| 23 | 4.3 | Architecture Strategy - 2 | 0.5d | 2020-10-06 08:00 A | 2020-10-06 12:00 | 10 | must start on 2020-10-06 08:00 | 4h |
| 24 | 4.4 | Roadmap | 0.25d | 2020-10-09 08:00 A | 2020-10-09 10:00 | 14 | must start on 2020-10-09 08:00 | 2h |
| 25 | 5 | Project Closure | 2d | 2020-11-03 08:00 A | 2020-11-04 17:00 | 12, 20 | must start on 2020-11-03 08:00 | 16h |
